Schedule from MS Project, 2017-05-11 to 2017-06-28, costs in R$, A marks actual dates.

## Calendars

- Padrão: Mon-Fri 09:00-12:00, 13:00-18:00; Sat-Sun off.

## Resources

| Resource |
| --- |
| Analista 01 |
| Analista 02 |
| Cliente |
| Gerente do Projeto |
| Analista 03 |
| Analista 03, Analista 4 |
| Analista 03, Analista 4, Analista 5 |
| Analista 04 |
| Analista 01, Analista 05 |
| Analista 01, Analista 03 |
| Analista 02, Anlista 03 |
| Analista 02, Anlista 04 |
| Analista 02, Anlista 05 |
| Analista 02, Anlista 04, Analista 05 |

## Schedule

| ID | WBS | Task | Duration | Start | Finish | Predecessors | Complete | Remaining | Baseline start | Baseline finish | Baseline duration | Total slack | Constraint | Resources | Work | Actual work | Cost | Baseline cost | Actual cost |
| --- | --- | --- | --- | --- | --- | --- | --- | --- | --- | --- | --- | --- | --- | --- | --- | --- | --- | --- | --- |
| 1 | 1 | **Projeto Sistema de Integração Elétrica** | 34.12d? | 2017-05-11 09:00 A | 2017-06-28 10:00 |  | 28% | 24.47d? | 2017-05-11 09:00 | 2017-07-03 18:00 | 38d? | 0d |  |  | 247.2h | 99.9h | 19,840 | 58,990 | 13,615 |
| 2 | 1.1 | **Prospecção** | 2.62d | 2017-05-11 09:00 A | 2017-05-15 15:00 A |  | 100% |  | 2017-05-11 09:00 | 2017-05-17 10:00 | 4.12d |  |  |  | 23h | 23h | 3,125 | 3,125 | 3,125 |
| 3 | 1.1.1 | **Proposta Técnica** | 2.25d | 2017-05-11 09:00 A | 2017-05-15 11:00 A |  | 100% |  | 2017-05-11 09:00 | 2017-05-17 10:00 | 4.12d |  |  |  | 17h | 17h | 2,325 | 2,325 | 2,325 |
| 4 | 1.1.1.1 | Estudar Domínio de Aplicação | 0.12d | 2017-05-11 09:00 A | 2017-05-11 10:00 A |  | 100% |  | 2017-05-11 09:00 | 2017-05-11 10:00 | 0.12d |  |  | Analista 01 | 2.5h | 2.5h | 375 | 375 | 375 |
| 5 | 1.1.1.2 | Reunir-se com o cliente | 0.5d | 2017-05-11 10:00 A | 2017-05-11 15:00 A | 4 | 100% |  | 2017-05-11 10:00 | 2017-05-11 15:00 | 0.5d |  |  | Analista 01 | 4h | 4h | 600 | 600 | 600 |
| 6 | 1.1.1.3 | Redigir PTEC | 1d | 2017-05-12 09:00 A | 2017-05-12 18:00 A | 5 | 100% |  | 2017-05-12 09:00 | 2017-05-12 18:00 | 1d |  | start no earlier than 2017-05-12 09:00 | Analista 01 | 8h | 8h | 1,200 | 1,200 | 1,200 |
| 7 | 1.1.1.4 | Revisar PTEC | 0.12d | 2017-05-15 09:00 A | 2017-05-15 10:00 A | 6 | 100% |  | 2017-05-15 09:00 | 2017-05-15 10:00 | 0.12d |  |  | Analista 02 | 1.5h | 1.5h | 150 | 150 | 150 |
| 8 | 1.1.1.5 | Aprovar PTEC | 0.12d | 2017-05-15 10:00 A | 2017-05-15 11:00 A | 7 | 100% |  | 2017-05-15 10:00 | 2017-05-17 10:00 | 2d |  |  | Cliente | 1h | 1h |  |  |  |
| 9 | 1.1.2 | **Est. Prel. Tam.** | 0.25d | 2017-05-15 09:00 A | 2017-05-15 11:00 A |  | 100% |  | 2017-05-15 09:00 | 2017-05-15 11:00 | 0.25d |  |  |  | 2h | 2h | 250 | 250 | 250 |
| 10 | 1.1.2.1 | Estimativa Tamanho do Projeto | 0.12d | 2017-05-15 09:00 A | 2017-05-15 10:00 A | 6 | 100% |  | 2017-05-15 09:00 | 2017-05-15 10:00 | 0.12d |  |  | Analista 01 | 1h | 1h | 150 | 150 | 150 |
| 11 | 1.1.2.2 | Revisar Estimativas de Tamanho do Projeto | 0.12d | 2017-05-15 10:00 A | 2017-05-15 11:00 A | 10 | 100% |  | 2017-05-15 10:00 | 2017-05-15 11:00 | 0.12d |  |  | Analista 02 | 1h | 1h | 100 | 100 | 100 |
| 12 | 1.1.3 | **Est. Prel. Cronograma e Orçamento** | 0.38d | 2017-05-15 11:00 A | 2017-05-15 15:00 A |  | 100% |  | 2017-05-15 11:00 | 2017-05-15 15:00 | 0.38d |  |  |  | 4h | 4h | 550 | 550 | 550 |
| 13 | 1.1.3.1 | Elaborar Cronograma e Orçamento Preliminares | 0.25d | 2017-05-15 11:00 A | 2017-05-15 14:00 A | 11 | 100% |  | 2017-05-15 11:00 | 2017-05-15 14:00 | 0.25d |  |  | Analista 01 | 3h | 3h | 450 | 450 | 450 |
| 14 | 1.1.3.2 | Revisar Cronograma e Orçamento Preliminares | 0.12d | 2017-05-15 14:00 A | 2017-05-15 15:00 A | 13 | 100% |  | 2017-05-15 14:00 | 2017-05-15 15:00 | 0.12d |  |  | Analista 02 | 1h | 1h | 100 | 100 | 100 |
| 15 | 1.2 | **Análise** | 10.12d? | 2017-05-17 10:00 A | 2017-05-31 11:00 A |  | 100% |  | 2017-05-17 10:00 | 2017-05-31 11:00 | 10.12d? |  |  |  | 43h | 43h | 6,150 | 10,800 | 6,150 |
| 16 | 1.2.1 | **Documento de Requisitos** | 4.25d? | 2017-05-17 10:00 A | 2017-05-23 12:00 A |  | 100% |  | 2017-05-17 10:00 | 2017-05-29 11:00 | 8.12d? |  |  |  | 32h | 32h | 4,650 | 9,300 | 4,650 |
| 17 | 1.2.1.1 | Reunir-se com o cliente | 0.5d | 2017-05-17 10:00 A | 2017-05-17 17:00 A | 8 | 100% |  | 2017-05-17 10:00 | 2017-05-17 17:00 | 0.5d |  |  | Analista 01 | 4h | 4h | 600 | 600 | 600 |
| 18 | 1.2.1.2 | Elaborar Documento de Requisitos | 3d | 2017-05-17 17:00 A | 2017-05-22 17:00 A | 17 | 100% |  | 2017-05-17 17:00 | 2017-05-22 17:00 | 3d |  |  | Analista 01 | 24h | 24h | 3,600 | 3,600 | 3,600 |
| 19 | 1.2.1.3 | Revisar Documento de Requisitos | 0.38d | 2017-05-22 17:00 A | 2017-05-23 11:00 A | 18 | 100% |  | 2017-05-22 17:00 | 2017-05-23 11:00 | 0.38d |  |  | Analista 02 | 3h | 3h | 300 | 300 | 300 |
| 20 | 1.2.1.4 | Submeter Documento de Requisitos para Aprovação do Cliente | 0.12d? | 2017-05-23 11:00 A | 2017-05-23 12:00 A | 19 | 100% |  | 2017-05-23 11:00 | 2017-05-29 11:00 | 4d? |  |  | Analista 01 | 1h | 1h | 150 | 4,800 | 150 |
| 21 | 1.2.2 | **MRB** | 2d? | 2017-05-29 11:00 A | 2017-05-31 11:00 A |  | 100% |  | 2017-05-29 11:00 | 2017-05-31 11:00 | 2d? |  |  |  | 11h | 11h | 1,500 | 1,500 | 1,500 |
| 22 | 1.2.2.1 | Elaborar MRB | 1d? | 2017-05-29 11:00 A | 2017-05-30 11:00 A | 20 | 100% |  | 2017-05-29 11:00 | 2017-05-30 11:00 | 1d? |  |  | Analista 01 | 8h | 8h | 1,200 | 1,200 | 1,200 |
| 23 | 1.2.2.2 | Revisar MRB | 1d? | 2017-05-30 11:00 A | 2017-05-31 11:00 A | 22 | 100% |  | 2017-05-30 11:00 | 2017-05-31 11:00 | 1d? |  |  | Analista 02 [37.5%] | 3h | 3h | 300 | 300 | 300 |
| 24 | 1.3 | **Projeto** | 2.42d | 2017-05-31 11:00 A | 2017-06-02 15:24 A |  | 100% |  | 2017-05-31 11:00 | 2017-06-02 15:24 | 2.42d |  |  |  | 19.4h | 19.4h | 2,790 | 2,790 | 2,790 |
| 25 | 1.3.1 | **Diagrama de Classes** | 1.3d | 2017-05-31 11:00 A | 2017-06-01 14:24 A |  | 100% |  | 2017-05-31 11:00 | 2017-06-01 14:24 | 1.3d |  |  |  | 10.4h | 10.4h | 1,490 | 1,490 | 1,490 |
| 26 | 1.3.1.1 | Elaborar Diagrama de Classes | 0.88d | 2017-05-31 11:00 A | 2017-06-01 10:00 A | 23 | 100% |  | 2017-05-31 11:00 | 2017-06-01 10:00 | 0.88d |  |  | Analista 01 | 7h | 7h | 1,050 | 1,050 | 1,050 |
| 27 | 1.3.1.2 | Revisar Diagrama de Classes | 0.17d | 2017-06-01 10:00 A | 2017-06-01 11:24 A | 26 | 100% |  | 2017-06-01 10:00 | 2017-06-01 11:24 | 0.17d |  |  | Analista 02 | 1.4h | 1.4h | 140 | 140 | 140 |
| 28 | 1.3.1.3 | Atualizar MRB | 0.25d | 2017-06-01 11:24 A | 2017-06-01 14:24 A | 27 | 100% |  | 2017-06-01 11:24 | 2017-06-01 14:24 | 0.25d |  |  | Analista 01 | 2h | 2h | 300 | 300 | 300 |

| ID | WBS | Task | Duration | Start | Finish | Predecessors | Complete | Remaining | Baseline start | Baseline finish | Baseline duration | Total slack | Free slack | Resources | Work | Actual work | Cost | Baseline cost | Actual cost |
| --- | --- | --- | --- | --- | --- | --- | --- | --- | --- | --- | --- | --- | --- | --- | --- | --- | --- | --- | --- |
| 29 | 1.3.2 | **Modelo Entidade Relacionamento** | 1.12d | 2017-06-01 14:24 A | 2017-06-02 15:24 A |  | 100% |  | 2017-06-01 14:24 | 2017-06-02 15:24 | 1.12d |  |  |  | 9h | 9h | 1,300 | 1,300 | 1,300 |
| 30 | 1.3.2.1 | Elaborar MER | 1d | 2017-06-01 14:24 A | 2017-06-02 14:24 A | 28 | 100% |  | 2017-06-01 14:24 | 2017-06-02 14:24 | 1d |  |  | Analista 01 | 8h | 8h | 1,200 | 1,200 | 1,200 |
| 31 | 1.3.2.2 | Revisar MER | 0.12d | 2017-06-02 14:24 A | 2017-06-02 15:24 A | 30 | 100% |  | 2017-06-02 14:24 | 2017-06-02 15:24 | 0.12d |  |  | Analista 02 | 1h | 1h | 100 | 100 | 100 |
| 32 | 1.4 | **Implementação e Teste** | 27.8d? | 2017-05-15 09:00 A | 2017-06-21 16:24 |  | 5% | 26.28d? | 2017-06-02 15:24 | 2017-07-03 13:48 | 20.8d | 4.33d |  |  | 153.8h | 14.5h | 6,175 | 33,875 | 1,550 |
| 33 | 1.4.1 | Implantar o Mantis | 1d? | 2017-05-15 09:00 | 2017-05-15 18:00 |  |  |  |  |  |  | 31.12d |  |  | 4h |  |  |  |  |
| 34 | 1.4.2 | Criar o Git | 0.1d | 2017-06-02 15:24 A | 2017-06-02 16:12 |  | 63% | 0.04d |  |  |  | -0.1d | 0d |  | 0.8h | 0.5h |  |  |  |
| 35 | 1.4.3 | **Release 01** | 1.25d | 2017-06-02 15:24 A | 2017-06-05 17:24 |  | 69% | 0.39d | 2017-06-02 15:24 | 2017-06-05 11:24 | 0.62d | 0.12d | 0d |  | 16h | 11h | 2,200 | 800 | 1,550 |
| 36 | 1.4.3.1 | **Implementação** | 1d | 2017-06-02 15:24 A | 2017-06-05 15:24 | 34 | 75% | 0.25d | 2017-06-02 15:24 | 2017-06-05 10:24 | 0.5d | 0.38d |  |  | 12h | 9h | 1,800 | 600 | 1,350 |
| 37 | 1.4.3.1.1 | Implementar Banco de Dados | 1d | 2017-06-02 15:24 A | 2017-06-05 15:24 |  | 63% | 0.38d | 2017-06-02 15:24 | 2017-06-02 17:24 | 0.25d | 0.38d |  | Analista 01 | 8h | 5h | 1,200 | 300 | 750 |
| 38 | 1.4.3.1.2 | Implementar RFS05 - Cadastrar Grupo Familiar | 0.25d | 2017-06-02 17:24 A | 2017-06-05 10:24 A | 37 | 100% |  | 2017-06-02 17:24 | 2017-06-05 10:24 | 0.25d |  |  | Analista 01 | 2h | 2h | 300 | 300 | 300 |
| 39 | 1.4.3.1.3 | Implementar RFS06 - Consultar Grupo Familiar | 0.25d | 2017-06-02 15:24 A | 2017-06-02 17:24 A | 38 | 100% |  |  |  |  |  |  | Analista 01 | 2h | 2h | 300 |  | 300 |
| 40 | 1.4.3.2 | **Teste** | 0.25d | 2017-06-05 15:24 A | 2017-06-05 17:24 |  | 50% | 0.12d | 2017-06-05 10:24 | 2017-06-05 11:24 | 0.12d | 0.12d |  |  | 4h | 2h | 400 | 200 | 200 |
| 41 | 1.4.3.2.1 | Testar RFS005 - Cadastrar Grupo Familiar | 0.25d | 2017-06-05 15:24 A | 2017-06-05 17:24 | 38 | 50% | 0.12d | 2017-06-05 10:24 | 2017-06-05 11:24 | 0.12d | 0.12d |  | Analista 02 | 2h | 1h | 200 | 100 | 100 |
| 42 | 1.4.3.2.2 | Testar RFS006 - Consultar Grupo Familiar | 0.25d | 2017-06-05 15:24 A | 2017-06-05 17:24 | 39 | 50% | 0.12d | 2017-06-05 10:24 | 2017-06-05 11:24 | 0.12d | 0.12d |  | Analista 02 | 2h | 1h | 200 | 100 | 100 |
| 43 | 1.4.4 | **Release 02** | 1.38d? | 2017-06-05 16:24 A | 2017-06-07 10:24 |  | 12% | 1.22d? | 2017-06-05 11:24 | 2017-06-05 15:24 | 0.38d | 4.33d | 0d |  | 29h | 3h | 500 | 700 |  |
| 44 | 1.4.4.1 | **Implementação** | 1.12d? | 2017-06-05 16:24 A | 2017-06-06 17:24 |  | 14% | 0.96d? | 2017-06-05 11:24 | 2017-06-05 14:24 | 0.25d | 4.33d |  |  | 16h | 2h | 500 | 400 |  |
| 45 | 1.4.4.1.1 | Implementar RFS007 - Alterar Grupo Familiar | 0.38d | 2017-06-05 17:24 | 2017-06-06 11:24 | 35 |  |  | 2017-06-05 11:24 | 2017-06-05 14:24 | 0.25d | 4.7d | 0d | Analista 02 | 3h |  | 300 | 200 |  |
| 46 | 1.4.4.1.2 | Implementar RFS008 - Excluir Grupo Familiar | 0.25d | 2017-06-06 11:24 | 2017-06-06 14:24 | 45 |  |  | 2017-06-05 11:24 | 2017-06-05 14:24 | 0.25d | 4.7d | 0d | Analista 02 | 2h |  | 200 | 200 |  |
| 47 | 1.4.4.1.3 | Implementar RFS001 - Cadastrar Usuário | 0.38d | 2017-06-05 16:24 A | 2017-06-06 10:24 | 35 | 67% | 0.12d |  |  |  | 0.75d | 0d | Analista 03, Analista 4 | 4h | 2h |  |  |  |
| 48 | 1.4.4.1.4 | Implementar RFS002 - Consultar Usuário | 0.25d | 2017-06-06 10:24 | 2017-06-06 13:24 | 47 |  |  |  |  |  | 4.33d | 0d | Analista 03, Analista 4 | 3h |  |  |  |  |
| 49 | 1.4.4.1.5 | Implementar RFS003 - Alterar Usuário | 0.25d | 2017-06-06 13:24 | 2017-06-06 15:24 | 48 |  |  |  |  |  | 4.33d | 0d | Analista 03, Analista 4, Analista 5 | 2h |  |  |  |  |
| 50 | 1.4.4.1.6 | Implementar RFS004 - Excluir Usuário | 0.25d? | 2017-06-06 15:24 | 2017-06-06 17:24 | 49 |  |  |  |  |  | 4.33d | 0d | Analista 03, Analista 4 | 2h |  |  |  |  |
| 51 | 1.4.4.2 | **Teste** | 0.88d? | 2017-06-06 11:24 A | 2017-06-07 10:24 |  | 8% | 0.8d? | 2017-06-05 14:24 | 2017-06-05 15:24 | 0.12d | 4.33d |  |  | 13h | 1h |  | 300 |  |
| 52 | 1.4.4.2.1 | Testar RFS007 - Alterar Grupo Familiar | 0.25d | 2017-06-06 11:24 | 2017-06-06 14:24 | 45 |  |  | 2017-06-05 14:24 | 2017-06-05 15:24 | 0.12d | 4.95d |  | Analista 01, Analista 05 | 2h |  |  | 150 |  |
| 53 | 1.4.4.2.2 | Testar RFS008 - Excluir Grupo Familiar | 0.25d | 2017-06-06 14:24 | 2017-06-06 16:24 | 46 |  |  | 2017-06-05 14:24 | 2017-06-05 15:24 | 0.12d | 4.7d |  | Analista 01, Analista 03 | 2h |  |  | 150 |  |
| 54 | 1.4.4.2.3 | Testar RFS001 - Cadastrar Usuário | 0.25d | 2017-06-06 16:24 A | 2017-06-07 09:24 | 47 | 50% | 0.12d |  |  |  | 4.45d |  | Analista 02, Anlista 03; Analista 02, Anlista 05 | 3h | 1h |  |  |  |
| 55 | 1.4.4.2.4 | Testar RFS002 - Consultar Usuário | 0.25d? | 2017-06-06 13:24 | 2017-06-06 15:24 | 48 |  |  |  |  |  | 4.83d |  | Analista 02, Anlista 04 | 2h |  |  |  |  |
| 56 | 1.4.4.2.5 | Testar RFS003 - Alterar Usuário | 0.25d | 2017-06-06 15:24 | 2017-06-06 17:24 | 49 |  |  |  |  |  | 4.58d |  | Analista 02, Anlista 05 | 2h |  |  |  |  |
| 57 | 1.4.4.2.6 | Testar RFS004 - Excluir Usuário | 0.25d | 2017-06-06 17:24 | 2017-06-07 10:24 | 50 |  |  |  |  |  | 4.33d |  | Analista 02, Anlista 04, Analista 05 | 2h |  |  |  |  |

| ID | WBS | Task | Duration | Start | Finish | Predecessors | Baseline start | Baseline finish | Baseline duration | Total slack | Free slack | Resources | Work | Cost | Baseline cost |
| --- | --- | --- | --- | --- | --- | --- | --- | --- | --- | --- | --- | --- | --- | --- | --- |
| 58 | 1.4.5 | **Release 03** | 5.12d? | 2017-06-07 10:24 | 2017-06-14 11:24 | 43 | 2017-06-05 15:24 | 2017-06-20 17:24 | 11.25d | 4.33d | 0d |  | 44h | 1,975 | 12,400 |
| 59 | 1.4.5.1 | **Implementação** | 4d? | 2017-06-07 10:24 | 2017-06-13 10:24 |  | 2017-06-05 15:24 | 2017-06-15 10:24 | 7.5d | 4.33d |  |  | 27h |  | 7,800 |
| 60 | 1.4.5.1.1 | Implementar RFS009 - Cadastrar Oficina | 0.38d | 2017-06-07 10:24 | 2017-06-07 14:24 | 43 | 2017-06-05 15:24 | 2017-06-05 17:24 | 0.25d | 4.58d | 0d | Analista 03, Analista 4, Analista 5 | 3h |  | 300 |
| 61 | 1.4.5.1.2 | Implementar RFS010 - Cadastrar Participante da Oficina | 1d? | 2017-06-07 14:24 | 2017-06-08 14:24 | 60 |  |  |  | 4.58d | 0d | Analista 03, Analista 4, Analista 5 | 3h |  |  |
| 62 | 1.4.5.1.3 | Implementar RFS011 - Consultar Oficina | 0.38d | 2017-06-08 14:24 | 2017-06-08 17:24 | 61 | 2017-06-05 15:24 | 2017-06-15 10:24 | 7.5d | 4.58d | 0d | Analista 03, Analista 4, Analista 5 | 3h |  | 7,500 |
| 63 | 1.4.5.1.4 | Implementar RFS012 - Alterar Oficinas | 1d? | 2017-06-08 17:24 | 2017-06-09 17:24 | 62 |  |  |  | 4.58d | 0d | Analista 03, Analista 4, Analista 5 | 3h |  |  |
| 64 | 1.4.5.1.5 | Implementar RFS013 - Excluir Oficinas | 1d? | 2017-06-09 17:24 | 2017-06-12 17:24 | 63 |  |  |  | 4.58d | 0d | Analista 03, Analista 4, Analista 5 | 3h |  |  |
| 65 | 1.4.5.1.6 | Implementar RFS014 - Cadastrar Serviços Ofertados | 1d? | 2017-06-07 10:24 | 2017-06-08 10:24 | 43 |  |  |  | 4.33d | 0d | Analista 03, Analista 4, Analista 5 | 3h |  |  |
| 66 | 1.4.5.1.7 | Implementar RFS015 - Consultar Serviços Ofertados | 1d? | 2017-06-08 10:24 | 2017-06-09 10:24 | 65 |  |  |  | 4.33d | 0d | Analista 03, Analista 4, Analista 5 | 3h |  |  |
| 67 | 1.4.5.1.8 | Implementar RFS016 - Alterar Serviços Ofertados | 1d? | 2017-06-09 10:24 | 2017-06-12 10:24 | 66 |  |  |  | 4.33d | 0d | Analista 03, Analista 4, Analista 5 | 3h |  |  |
| 68 | 1.4.5.1.9 | Implementar RFS017 - Excluir Serviços Ofertados | 1d? | 2017-06-12 10:24 | 2017-06-13 10:24 | 67 |  |  |  | 4.33d | 0d | Analista 03, Analista 4, Analista 5 | 3h |  |  |
| 69 | 1.4.5.2 | **Teste** | 4.75d? | 2017-06-07 14:24 | 2017-06-14 11:24 |  | 2017-06-15 10:24 | 2017-06-20 17:24 | 3.75d | 4.33d |  |  | 17h | 1,975 | 4,600 |
| 70 | 1.4.5.2.1 | Testar RFS009 - Cadastrar Oficinas | 0.25d | 2017-06-07 14:24 | 2017-06-07 16:24 | 60 |  |  |  | 8.82d |  | Analista 02 | 2h | 200 |  |
| 71 | 1.4.5.2.2 | Testar RFS010 - Cadastrar Participante da Oficina | 1.12d? | 2017-06-08 14:24 | 2017-06-09 15:24 | 61 |  |  |  | 6.95d |  | Analista 02 | 2h | 200 |  |
| 72 | 1.4.5.2.3 | Testar RFS011 - Consultar Oficinas | 1.12d | 2017-06-08 17:24 | 2017-06-12 09:24 | 62 |  |  |  | 6.58d |  | Analista 03 | 2h | 250 |  |
| 73 | 1.4.5.2.4 | Testar RFS012 - Alterar Oficinas | 1d? | 2017-06-09 17:24 | 2017-06-12 17:24 | 63 |  |  |  | 5.7d |  | Analista 03 | 1h | 125 |  |
| 74 | 1.4.5.2.5 | Testar RFS013 - Excluir Oficinas | 1.12d? | 2017-06-12 17:24 | 2017-06-14 09:24 | 64 |  |  |  | 4.58d |  | Analista 03 | 2h | 250 |  |
| 75 | 1.4.5.2.6 | Testar RFS014- Cadastrar Serviços Ofertados | 0.25d | 2017-06-08 10:24 | 2017-06-08 13:24 | 65 | 2017-06-15 10:24 | 2017-06-15 11:24 | 0.12d | 8.2d |  | Analista 02 | 2h | 200 | 100 |
| 76 | 1.4.5.2.7 | Testar RFS015 - Consultar Serviços Ofertados | 0.25d | 2017-06-09 10:24 | 2017-06-09 13:24 | 66 | 2017-06-15 10:24 | 2017-06-20 17:24 | 3.75d | 7.2d |  | Analista 01 | 2h | 300 | 4,500 |
| 77 | 1.4.5.2.8 | Testar RFS016 - Alterar Serviços Ofertados | 0.25d? | 2017-06-12 10:24 | 2017-06-12 13:24 | 67 |  |  |  | 6.2d |  | Analista 03 | 2h | 250 |  |
| 78 | 1.4.5.2.9 | Testar RFS017 - Excluir Serviços Ofertados | 1.12d | 2017-06-13 10:24 | 2017-06-14 11:24 | 68 |  |  |  | 4.33d |  | Analista 02 | 2h | 200 |  |
| 79 | 1.4.6 | **Release 04** | 5.5d? | 2017-06-14 11:24 | 2017-06-21 16:24 | 58 | 2017-06-20 17:24 | 2017-07-03 13:48 | 8.55d | 4.33d |  |  | 60h | 1,500 | 19,975 |
| 80 | 1.4.6.1 | **Implementação** | 5.25d? | 2017-06-14 11:24 | 2017-06-21 14:24 |  | 2017-06-20 17:24 | 2017-06-29 09:48 | 6.17d | 4.33d | 0d |  | 30h | 550 | 16,550 |
| 81 | 1.4.6.1.1 | Implementar RFC007 | 0.25d | 2017-06-14 11:24 | 2017-06-14 14:24 | 58 | 2017-06-20 17:24 | 2017-06-21 10:24 | 0.25d | 9.32d | 0d | Analista 04 | 2h |  | 250 |
| 82 | 1.4.6.1.2 | Implementar RFC008 | 0.25d | 2017-06-21 11:24 | 2017-06-21 14:24 | 58 | 2017-06-27 17:24 | 2017-06-28 10:24 | 0.25d | 4.33d | 0d | Analista 04 | 2h |  | 300 |
| 83 | 1.4.6.1.3 | Implementar RFC009 | 0.25d | 2017-06-14 11:24 | 2017-06-14 15:48 | 58 | 2017-06-20 17:24 | 2017-06-29 09:48 | 6d | 9.15d | 0d | Analista 03 | 2h | 250 | 6,000 |
| 84 | 1.4.6.1.4 | Implementar RFC010 | 0.25d | 2017-06-14 11:24 | 2017-06-14 14:24 | 58 | 2017-06-20 17:24 | 2017-06-27 17:24 | 5d | 9.32d | 0d | Analista 01 | 2h | 300 | 6,000 |
| 85 | 1.4.6.1.5 | Implementar RFC011 | 0.25d | 2017-06-14 11:24 | 2017-06-14 14:24 | 58 | 2017-06-20 17:24 | 2017-06-27 17:24 | 5d | 9.32d |  | Analista 01, Analista 05 | 2h |  | 4,000 |
| 86 | 1.4.6.1.6 | Implementar REL001 | 1d? | 2017-06-14 11:24 | 2017-06-15 11:24 |  |  |  |  | 8.57d |  |  | 4h |  |  |
| 87 | 1.4.6.1.7 | Implementar REL002 | 1d? | 2017-06-14 11:24 | 2017-06-15 11:24 |  |  |  |  | 8.57d |  |  | 4h |  |  |
| 88 | 1.4.6.1.8 | Implementar REL003 | 1d? | 2017-06-14 11:24 | 2017-06-15 11:24 |  |  |  |  | 8.57d |  |  | 4h |  |  |
| 89 | 1.4.6.1.9 | Implementar REL004 | 1d? | 2017-06-14 11:24 | 2017-06-15 11:24 |  |  |  |  | 8.57d |  |  | 4h |  |  |
| 90 | 1.4.6.1.10 | Implementar REL005 | 1d? | 2017-06-14 11:24 | 2017-06-15 11:24 |  |  |  |  | 8.57d |  |  | 4h |  |  |

| ID | WBS | Task | Duration | Start | Finish | Predecessors | Baseline start | Baseline finish | Baseline duration | Total slack | Constraint | Resources | Work | Cost | Baseline cost |
| --- | --- | --- | --- | --- | --- | --- | --- | --- | --- | --- | --- | --- | --- | --- | --- |
| 91 | 1.4.6.2 | **Teste** | 5.5d? | 2017-06-14 11:24 | 2017-06-21 16:24 |  | 2017-06-29 09:48 | 2017-07-03 13:48 | 2.38d | 4.33d |  |  | 30h | 950 | 3,425 |
| 92 | 1.4.6.2.1 | Testar RFC007 | 0.25d | 2017-06-21 14:24 | 2017-06-21 16:24 | 80 | 2017-06-29 09:48 | 2017-06-29 10:48 | 0.12d | 4.33d |  | Analista 02 | 2h | 200 | 100 |
| 93 | 1.4.6.2.2 | Testar RFC008 | 0.25d | 2017-06-14 14:24 | 2017-06-14 16:24 | 81 | 2017-06-29 09:48 | 2017-06-29 10:48 | 0.12d | 9.32d |  | Analista 02 | 2h | 200 | 100 |
| 94 | 1.4.6.2.3 | Testar RFC009 | 0.25d | 2017-06-21 14:24 | 2017-06-21 16:24 | 82 | 2017-06-29 09:48 | 2017-07-03 09:48 | 2d | 4.33d |  | Analista 01, Analista 05 | 2h |  | 2,400 |
| 95 | 1.4.6.2.4 | Testar RFC010 | 0.25d | 2017-06-14 15:48 | 2017-06-14 17:48 | 83 | 2017-06-29 09:48 | 2017-06-29 13:48 | 0.38d | 9.15d |  | Analista 03 | 2h | 250 | 375 |
| 96 | 1.4.6.2.5 | Testar RFC011 | 0.25d | 2017-06-14 14:24 | 2017-06-14 16:24 | 84 | 2017-07-03 09:48 | 2017-07-03 13:48 | 0.38d | 9.32d |  | Analista 01 | 2h | 300 | 450 |
| 97 | 1.4.6.2.6 | Implementar REL001 | 1d? | 2017-06-14 11:24 | 2017-06-15 11:24 |  |  |  |  | 8.82d |  |  | 4h |  |  |
| 98 | 1.4.6.2.7 | Implementar REL002 | 1d? | 2017-06-14 11:24 | 2017-06-15 11:24 |  |  |  |  | 8.82d |  |  | 4h |  |  |
| 99 | 1.4.6.2.8 | Implementar REL003 | 1d? | 2017-06-14 11:24 | 2017-06-15 11:24 |  |  |  |  | 8.82d |  |  | 4h |  |  |
| 100 | 1.4.6.2.9 | Implementar REL004 | 1d? | 2017-06-14 11:24 | 2017-06-15 11:24 |  |  |  |  | 8.82d |  |  | 4h |  |  |
| 101 | 1.4.6.2.10 | Implementar REL005 | 1d? | 2017-06-14 11:24 | 2017-06-15 11:24 |  |  |  |  | 8.82d |  |  | 4h |  |  |
| 102 | 1.5 | **Monitoramento e Controle** | 0.88d | 2017-06-27 10:00 | 2017-06-27 18:00 |  | 2017-05-11 09:00 | 2017-06-27 18:00 | 34d | 0d |  |  | 7h | 1,400 | 2,000 |
| 103 | 1.5.1 | Acompanhar Projeto | 0.88d | 2017-06-27 10:00 | 2017-06-27 18:00 |  | 2017-06-26 16:00 | 2017-06-27 18:00 | 1.25d? | 0d | finish no earlier than 2017-06-27 18:00 | Gerente do Projeto | 7h | 1,400 | 2,000 |
| 104 | 1.6 | Encerramento | 0.12d | 2017-06-28 09:00 | 2017-06-28 10:00 | 103 | 2017-06-28 09:00 | 2017-07-03 18:00 | 4d | 0d | start no earlier than 2017-06-28 09:00 | Gerente do Projeto | 1h | 200 | 6,400 |
